# San Rafael Project Schedule - DRAFT

Schedule from MS Project, 2025-05-05 to 2026-07-13.

## Calendars

- Standard: Mon-Fri 08:00-12:00, 13:00-17:00; Sat-Sun off.

## Schedule

| ID | WBS | Task | Type | Duration | Start | Finish | Predecessors | Total slack | Free slack | Constraint |
| --- | --- | --- | --- | --- | --- | --- | --- | --- | --- | --- |
| 1 | 1 | **City of Berkeley** |  | 311d | 2025-05-05 | 2026-07-13 |  | 0d |  |  |
| 2 | 1.1 | **Project Initiation** |  | 20d | 2025-05-05 | 2025-05-30 |  | 25d |  |  |
| 3 | 1.1.1 | **Project Initiation** |  | 20d | 2025-05-05 | 2025-05-30 |  | 25d | 0d |  |
| 4 | 1.1.1.3 | Prepare draft Project Charter |  | 15d | 2025-05-05 | 2025-05-23 |  | 25d | 0d | start no earlier than 2025-05-05 |
| 5 | 1.1.1.4 | Review Project Charter with the Client and revise |  | 10d | 2025-05-12 | 2025-05-23 | 4SS+5d | 25d | 0d | start no earlier than 2023-01-23 |
| 6 | 1.1.1.5 | Sign-off on Project Charter | milestone | 0d | 2025-05-30 | 2025-05-30 | 5FS+5d | 25d |  |  |
| 7 | 1.1.1.6 | Prepare draft baseline Project Plan |  | 15d | 2025-05-05 | 2025-05-23 | 4SS | 25d | 0d |  |
| 8 | 1.1.1.7 | Review Project Plan with Client and Revise |  | 5d | 2025-05-19 | 2025-05-23 | 7FS-5d | 25d | 0d |  |
| 9 | 1.1.1.8 | Sign-off on baseline Project Plan | milestone | 0d | 2025-05-30 | 2025-05-30 | 8FS+5d | 25d | 0d |  |
| 10 | 1.1.1.7 | D01 – SOW/Project Charter, Project Plan/Schedule, Project Monitoring Tools Complete | milestone | 0d | 2025-05-30 | 2025-05-30 | 9 | 25d | 0d |  |
| 11 | 1.1.2.1 | Project Kick off Meeting |  | 5d | 2025-05-26 | 2025-05-30 | 10FF | 25d |  | start no earlier than 2023-02-03 |
| 12 | 1.2 | **Project Management** |  | 239d | 2025-05-30 | 2026-04-30 |  | 52d |  |  |
| 13 | 1.2.1 | PM01 Month 1 PM | milestone | 0d | 2025-05-30 | 2025-05-30 | 3 | 52d | 0d |  |
| 14 | 1.2.2 | PM02 Month 2 PM | milestone | 0d | 2025-06-30 | 2025-06-30 | 13FS+21d | 52d | 0d |  |
| 15 | 1.2.3 | PM03 Month 3 PM | milestone | 0d | 2025-07-31 | 2025-07-31 | 14FS+23d | 52d | 0d |  |
| 16 | 1.2.4 | PM04 Month 4 PM | milestone | 0d | 2025-08-29 | 2025-08-29 | 15FS+21d | 52d | 0d |  |
| 17 | 1.2.5 | PM05 Month 5 PM | milestone | 0d | 2025-09-30 | 2025-09-30 | 16FS+22d | 52d | 0d |  |
| 18 | 1.2.6 | PM06 Month 6 PM | milestone | 0d | 2025-10-31 | 2025-10-31 | 17FS+23d | 52d | 0d |  |
| 19 | 1.2.7 | PM07 Month 7 PM | milestone | 0d | 2025-11-28 | 2025-11-28 | 18FS+20d | 52d | 0d |  |
| 20 | 1.2.8 | PM08 Month 8 PM | milestone | 0d | 2025-12-31 | 2025-12-31 | 19FS+23d | 52d | 0d |  |
| 21 | 1.2.9 | PM09 Month 9 PM | milestone | 0d | 2026-01-30 | 2026-01-30 | 20FS+22d | 52d | 0d |  |
| 22 | 1.2.10 | PM10 Month 10 PM | milestone | 0d | 2026-02-27 | 2026-02-27 | 21FS+20d | 52d | 0d |  |
| 23 | 1.2.11 | PM11 Month 11 PM | milestone | 0d | 2026-03-31 | 2026-03-31 | 22FS+22d | 52d | 0d |  |
| 24 | 1.2.12 | PM12 Month 12 PM | milestone | 0d | 2026-04-30 | 2026-04-30 | 23FS+22d | 52d |  |  |

| ID | WBS | Task | Type | Duration | Start | Finish | Predecessors | Total slack | Free slack | Constraint |
| --- | --- | --- | --- | --- | --- | --- | --- | --- | --- | --- |
| 25 | 1.3 | **Accela Implementation** |  | 271d | 2025-06-02 | 2026-06-15 |  | 20d |  |  |
| 26 | 1.3 | **Accela Record Templates Setup** |  | 10d | 2025-06-02 | 2025-06-13 |  | 271d | 0d |  |
| 27 | 1.3.1.1 | Install Accela Templates |  | 10d | 2025-06-02 | 2025-06-13 | 3 | 271d | 0d |  |
| 28 | 1.3.1 | Review and Match to Client Records |  | 5d | 2025-06-09 | 2025-06-13 | 27FF | 271d | 0d |  |
| 29 | 1.3.1.3 | D04 - Accela Templates Setup Complete | milestone | 0d | 2025-06-13 | 2025-06-13 | 28 | 271d |  | start no earlier than 2023-03-06 |
| 30 | 1.4 | **Records Analysis, Design and Configuration** |  | 157d | 2025-06-02 | 2026-01-06 |  | 25d |  |  |
| 31 | 1.3.2.1 | SME Client Self Paced Training |  | 10d | 2025-06-02 | 2025-06-13 | 3 | 172d |  |  |
| 32 | 1.3.2.2 | To Be Analysis Reviews and Designs |  | 20d | 2025-06-02 | 2025-06-27 | 3 | 25d | 0d |  |
| 33 | 1.4.1.1 | **Land Use Planning** |  | 42d | 2025-06-30 | 2025-08-26 |  | 25d | 0d |  |
| 34 | 1.4.1.1 | Planning Analysis Orientation |  | 2d | 2025-06-30 | 2025-07-01 | 32 | 25d | 0d |  |
| 35 | 1.4.1.1 | Walkthrough sessions (10 Sessions) |  | 20d | 2025-07-02 | 2025-07-29 | 34 | 25d | 0d |  |
| 36 | 1.4.1.1 | Record Configuration |  | 20d | 2025-07-02 | 2025-07-29 | 34 | 70d | 0d |  |
| 37 | 1.4.1.4 | Generate Configuration Design Report |  | 2d | 2025-07-30 | 2025-07-31 | 36, 35 | 88d | 0d |  |
| 38 | 1.3.2.3.5 | Planning Records Config Complete | milestone | 0d | 2025-07-31 | 2025-07-31 | 37 | 88d |  |  |
| 39 | 1.4.1.8 | QA Testing |  | 20d | 2025-07-09 | 2025-08-05 | 36SS+5d, 35SS+5d | 70d | 0d |  |
| 40 | 1.4.1.9 | Client UAT |  | 15d | 2025-08-06 | 2025-08-26 | 39 | 70d | 0d |  |
| 41 | 1.3.2.3.8 | D05 – Land User Planning Records Complete | milestone | 0d | 2025-08-26 | 2025-08-26 | 40 | 70d |  |  |
| 42 | 1.4.1.1 | **Building Permits** |  | 55d | 2025-08-06 | 2025-10-21 |  | 25d | 0d |  |
| 43 | 1.4.1.1 | Building/PW/Fire Analysis Orientation |  | 5d | 2025-08-06 | 2025-08-12 | 35FS+5d | 25d | 0d |  |
| 44 | 1.4.1.1 | Walkthrough sessions (20 sessions) |  | 30d | 2025-08-13 | 2025-09-23 | 43 | 25d | 0d |  |
| 45 | 1.4.1.1 | Record Configuration |  | 30d | 2025-08-13 | 2025-09-23 | 43 | 80d | 0d |  |
| 46 | 1.4.1.2 | Generate Configuration Design Report |  | 2d | 2025-09-24 | 2025-09-25 | 45, 44 | 98d | 0d |  |
| 47 | 1.3.2.4.5 | Building Records Config Complete | milestone | 0d | 2025-09-25 | 2025-09-25 | 46 | 98d |  |  |
| 48 | 1.4.1.8 | QA Testing |  | 30d | 2025-08-20 | 2025-09-30 | 45SS+5d, 44SS+5d | 80d | 0d |  |
| 49 | 1.4.1.9 | City UAT |  | 15d | 2025-10-01 | 2025-10-21 | 48 | 80d | 0d |  |
| 50 | 1.3.2.4.8 | D06 – Building Permits Records Complete | milestone | 0d | 2025-10-21 | 2025-10-21 | 49 | 80d |  |  |

| ID | WBS | Task | Type | Duration | Start | Finish | Predecessors | Total slack | Free slack |
| --- | --- | --- | --- | --- | --- | --- | --- | --- | --- |
| 51 | 1.4.1.1 | **Public Works and Fire** |  | 35d | 2025-10-01 | 2025-11-18 |  | 25d |  |
| 52 | 1.4.1.1 | Public Works and Fire Analysis Orientation |  | 5d | 2025-10-01 | 2025-10-07 | 44FS+5d | 25d | 0d |
| 53 | 1.4.1.1 | Walkthrough sessions (15 sessions) |  | 20d | 2025-10-01 | 2025-10-28 | 52SS | 25d | 0d |
| 54 | 1.4.1.1 | Record Configuration |  | 20d | 2025-10-01 | 2025-10-28 | 52SS | 60d | 0d |
| 55 | 1.4.1.2 | Generate Configuration Design Report |  | 2d | 2025-10-29 | 2025-10-30 | 53, 54 | 73d | 0d |
| 56 | 1.3.2.5.5 | D07a – Public Works and Fire Records Config Complete | milestone | 0d | 2025-10-30 | 2025-10-30 | 55 | 73d |  |
| 57 | 1.4.1.8 | QA Testing |  | 20d | 2025-10-08 | 2025-11-04 | 53SS+5d, 54SS+5d | 60d | 0d |
| 58 | 1.3.2.5.7 | D07b – Public Works and Fire Records Build Complete | milestone | 0d | 2025-11-04 | 2025-11-04 | 57 | 60d | 0d |
| 59 | 1.4.1.9 | City UAT |  | 10d | 2025-11-05 | 2025-11-18 | 58 | 60d | 0d |
| 60 | 1.3.2.5.9 | D07c – Engineering and Public Works Records UAT Complete | milestone | 0d | 2025-11-18 | 2025-11-18 | 59 | 60d |  |
| 61 | 1.4.1.1 | **Energy and Toxic Mgmt** |  | 30d | 2025-10-29 | 2025-12-09 |  | 25d |  |
| 62 | 1.4.1.1 | Energy and Toxic Mgmt Analysis Orientation |  | 5d | 2025-10-29 | 2025-11-04 | 53 | 25d | 0d |
| 63 | 1.4.1.1 | Walkthrough sessions (15 sessions) |  | 15d | 2025-10-29 | 2025-11-18 | 62SS | 25d | 0d |
| 64 | 1.4.1.1 | Record Configuration |  | 15d | 2025-10-29 | 2025-11-18 | 62SS | 45d | 0d |
| 65 | 1.4.1.2 | Generate Configuration Design Report |  | 2d | 2025-11-19 | 2025-11-20 | 63, 64 | 58d | 0d |
| 66 | 1.3.2.6.5 | Energy and Toxic Mgmt Records Config Complete | milestone | 0d | 2025-11-20 | 2025-11-20 | 65 | 58d |  |
| 67 | 1.4.1.8 | QA Testing |  | 15d | 2025-11-05 | 2025-11-25 | 63SS+5d, 64SS+5d | 45d | 0d |
| 68 | 1.4.1.9 | City UAT |  | 10d | 2025-11-26 | 2025-12-09 | 67 | 45d | 0d |
| 69 | 1.3.2.6.8 | D08 – Energy and Toxic Mgmt Records Complete | milestone | 0d | 2025-12-09 | 2025-12-09 | 68 | 45d |  |
| 70 | 1.4.1.1 | **Code Enforcement** |  | 30d | 2025-11-26 | 2026-01-06 |  | 25d |  |
| 71 | 1.4.1.1 | Enforcement Analysis Orientation |  | 5d | 2025-11-26 | 2025-12-02 | 63FS+5d | 25d | 0d |
| 72 | 1.4.1.1 | Walkthrough sessions (15 sessions) |  | 15d | 2025-11-26 | 2025-12-16 | 71SS | 25d | 0d |
| 73 | 1.4.1.1 | Record Configuration |  | 15d | 2025-11-26 | 2025-12-16 | 71SS | 25d | 0d |
| 74 | 1.4.1.2 | Generate Configuration Design Report |  | 2d | 2025-12-17 | 2025-12-18 | 73, 72 | 38d | 0d |
| 75 | 1.3.2.7.5 | Enforcement Records Config Complete | milestone | 0d | 2025-12-18 | 2025-12-18 | 74 | 38d |  |
| 76 | 1.4.1.8 | QA Testing |  | 15d | 2025-12-03 | 2025-12-23 | 73SS+5d, 72SS+5d | 25d | 0d |
| 77 | 1.4.1.9 | City UAT |  | 10d | 2025-12-24 | 2026-01-06 | 76 | 25d | 0d |
| 78 | 1.3.2.7.8 | D09 – Enforcement Records Complete | milestone | 0d | 2026-01-06 | 2026-01-06 | 77 | 25d |  |

| ID | WBS | Task | Type | Duration | Start | Finish | Predecessors | Total slack | Free slack | Constraint |
| --- | --- | --- | --- | --- | --- | --- | --- | --- | --- | --- |
| 79 | 1.6 | **System Integrations Analysis & Build** |  | 162d | 2025-06-30 | 2026-02-10 |  | 0d |  |  |
| 80 | 1.6.1 | **Active Directory (Single Sign On)** |  | 7d | 2025-06-30 | 2025-07-08 |  | 140d | 0d |  |
| 81 | 1.6.1.1 | AD Requirements Analysis and Documentation |  | 5d | 2025-06-30 | 2025-07-04 | 33SS | 140d | 0d | start no earlier than 2023-03-13 |
| 82 | 1.6.1.5.1 | AD SSO configuration |  | 5d | 2025-06-30 | 2025-07-04 | 81SS | 140d | 0d |  |
| 83 | 1.6.1.5.2 | AD SSO Testing |  | 1d | 2025-07-07 | 2025-07-07 | 82 | 140d | 0d |  |
| 84 | 1.6.1.5.3 | AD SSO Signoff |  | 1d | 2025-07-08 | 2025-07-08 | 83 | 140d | 0d |  |
| 85 | 1.6.1.5.4 | D20 - SSO Active Directory Complete | milestone | 0d | 2025-07-08 | 2025-07-08 | 84 | 140d |  |  |
| 86 | 1.6.1 | **Outlook** |  | 7d | 2025-06-30 | 2025-07-08 | 33SS | 140d | 0d |  |
| 87 | 1.6.1.1 | Outlook Requirements Analysis and Documentation |  | 5d | 2025-06-30 | 2025-07-04 |  | 140d | 0d | start no earlier than 2023-03-13 |
| 88 | 1.6.1.5.1 | Outlook configuration |  | 5d | 2025-06-30 | 2025-07-04 | 87SS | 140d | 0d |  |
| 89 | 1.6.1.5.2 | Outlook Testing |  | 1d | 2025-07-07 | 2025-07-07 | 88 | 140d | 0d |  |
| 90 | 1.6.1.5.3 | Outlook Signoff |  | 1d | 2025-07-08 | 2025-07-08 | 89 | 140d | 0d |  |
| 91 | 1.6.1.5.4 | D21 - Outlook Complete | milestone | 0d | 2025-07-08 | 2025-07-08 | 90 | 140d |  |  |
| 92 | 1.6.5 | **CSLB** |  | 10d | 2025-07-09 | 2025-07-22 |  | 145d |  |  |
| 93 | 1.6.5.5.1 | CSLB Configuration |  | 10d | 2025-07-09 | 2025-07-22 | 86 | 145d | 0d |  |
| 94 | 1.6.5.5.2 | CSLB Testing |  | 5d | 2025-07-16 | 2025-07-22 | 93FF | 145d | 0d |  |
| 95 | 1.6.5.5.3 | CSLB Signoff | milestone | 0d | 2025-07-22 | 2025-07-22 | 94 | 145d | 0d |  |
| 96 | 1.6.5.5.4 | D23 - CSLB Build COMPLETE | milestone | 0d | 2025-07-22 | 2025-07-22 | 95 | 145d |  |  |
| 97 | 1.6.5 | **GIS (ESRI)** |  | 15d | 2025-07-09 | 2025-07-29 |  | 140d |  |  |
| 98 | 1.6.5.1 | Requirements Analysis and Documentation |  | 5d | 2025-07-09 | 2025-07-15 | 86, 80 | 140d | 0d | start no earlier than 2023-02-20 |
| 99 | 1.6.5.5.1 | GIS Configuration |  | 10d | 2025-07-16 | 2025-07-29 | 98 | 140d | 0d |  |
| 100 | 1.6.5.5.2 | GIS Testing |  | 5d | 2025-07-23 | 2025-07-29 | 99FF | 140d | 0d |  |
| 101 | 1.6.5.5.3 | GIS Signoff | milestone | 0d | 2025-07-29 | 2025-07-29 | 100 | 140d | 0d |  |
| 102 | 1.6.5.5.4 | D24 - GIS Build COMPLETE | milestone | 0d | 2025-07-29 | 2025-07-29 | 101 | 140d |  |  |

| ID | WBS | Task | Type | Duration | Start | Finish | Predecessors | Total slack | Free slack | Constraint |
| --- | --- | --- | --- | --- | --- | --- | --- | --- | --- | --- |
| 103 | 1.6.4 | **Electronic Plan Review (BlueBeam)** |  | 20d | 2025-07-21 | 2025-08-15 |  | 127d |  |  |
| 104 | 1.6.4.1 | Requirements Analysis and Documentation |  | 5d | 2025-07-21 | 2025-07-25 | 33SS+15d | 127d | 0d | start no earlier than 2023-02-13 |
| 105 | 1.6.4.5 | EPR - BlueBeam Config |  | 10d | 2025-07-21 | 2025-08-01 | 104SS | 127d | 0d |  |
| 106 | 1.6.4.5.2 | Testing |  | 10d | 2025-08-04 | 2025-08-15 | 105 | 127d | 0d |  |
| 107 | 1.6.4.5.3 | BlueBeam Signoff | milestone | 0d | 2025-08-15 | 2025-08-15 | 106 | 127d | 0d |  |
| 108 | 1.6.4.5.4 | D25 - EPR BlueBeamCOMPLETE | milestone | 0d | 2025-08-15 | 2025-08-15 | 107 | 127d |  |  |
| 109 | 1.6.4 | **Payment Processor / Adapter** |  | 20d | 2025-08-27 | 2025-09-23 |  | 70d | 0d |  |
| 110 | 1.6.4.1 | Requirements Analysis and Documentation |  | 5d | 2025-08-27 | 2025-09-02 | 33 | 70d | 0d | start no earlier than 2023-02-13 |
| 111 | 1.6.4.5 | Payment Processor Config |  | 10d | 2025-08-27 | 2025-09-09 | 110SS | 70d | 0d |  |
| 112 | 1.6.4.5.2 | Testing |  | 10d | 2025-09-10 | 2025-09-23 | 111 | 70d | 0d |  |
| 113 | 1.6.4.5.3 | Payment Processor Signoff | milestone | 0d | 2025-09-23 | 2025-09-23 | 112 | 70d | 0d |  |
| 114 | 1.6.4.5.4 | D22 - Payment Adapter COMPLETE | milestone | 0d | 2025-09-23 | 2025-09-23 | 113 | 70d |  |  |
| 115 | 1.6.4 | **CitizenServe** |  | 30d | 2025-09-24 | 2025-11-04 |  | 70d | 0d |  |
| 116 | 1.6.4.1 | Requirements Analysis and Documentation |  | 5d | 2025-09-24 | 2025-09-30 | 109 | 70d | 0d | start no earlier than 2023-02-13 |
| 117 | 1.6.4.5 | Config |  | 15d | 2025-09-24 | 2025-10-14 | 116SS | 70d | 0d |  |
| 118 | 1.6.4.5.2 | Testing |  | 15d | 2025-10-15 | 2025-11-04 | 117 | 70d | 0d |  |
| 119 | 1.6.4.5.3 | Signoff | milestone | 0d | 2025-11-04 | 2025-11-04 | 118 | 70d | 0d |  |
| 120 | 1.6.4.5.4 | D26 - CitizenServe COMPLETE | milestone | 0d | 2025-11-04 | 2025-11-04 | 119 | 70d |  |  |
| 121 | 1.6.4 | **Assessor Office** |  | 30d | 2025-10-08 | 2025-11-18 |  | 60d |  |  |
| 122 | 1.6.4.1 | Requirements Analysis and Documentation |  | 5d | 2025-10-08 | 2025-10-14 | 115SS+10d | 60d | 0d | start no earlier than 2023-02-13 |
| 123 | 1.6.4.5 | Config |  | 15d | 2025-10-08 | 2025-10-28 | 122SS | 60d | 0d |  |
| 124 | 1.6.4.5.2 | Testing |  | 15d | 2025-10-29 | 2025-11-18 | 123 | 60d | 0d |  |
| 125 | 1.6.4.5.3 | Signoff | milestone | 0d | 2025-11-18 | 2025-11-18 | 124 | 60d | 0d |  |
| 126 | 1.6.4.5.4 | D27 - Assessor Office COMPLETE | milestone | 0d | 2025-11-18 | 2025-11-18 | 125 | 60d |  |  |

| ID | WBS | Task | Type | Duration | Start | Finish | Predecessors | Total slack | Free slack | Constraint |
| --- | --- | --- | --- | --- | --- | --- | --- | --- | --- | --- |
| 127 | 1.6.4 | **Consumer Affairs** |  | 30d | 2025-10-08 | 2025-11-18 |  | 60d |  |  |
| 128 | 1.6.4.1 | Requirements Analysis and Documentation |  | 5d | 2025-10-08 | 2025-10-14 | 115SS+10d | 60d | 0d | start no earlier than 2023-02-13 |
| 129 | 1.6.4.5 | Config |  | 15d | 2025-10-08 | 2025-10-28 | 128SS | 60d | 0d |  |
| 130 | 1.6.4.5.2 | Testing |  | 15d | 2025-10-29 | 2025-11-18 | 129 | 60d | 0d |  |
| 131 | 1.6.4.5.3 | Signoff | milestone | 0d | 2025-11-18 | 2025-11-18 | 130 | 60d | 0d |  |
| 132 | 1.6.4.5.4 | D28 - Consumer Affairs COMPLETE | milestone | 0d | 2025-11-18 | 2025-11-18 | 131 | 60d |  |  |
| 133 | 1.6.4 | **RealQuest** |  | 30d | 2025-10-08 | 2025-11-18 |  | 0d |  |  |
| 134 | 1.6.4.1 | Requirements Analysis and Documentation |  | 5d | 2025-10-08 | 2025-10-14 | 115SS+10d | 0d |  | start no earlier than 2023-02-13 |
| 135 | 1.6.4.5 | Config |  | 15d | 2025-10-08 | 2025-10-28 | 134SS | 0d |  |  |
| 136 | 1.6.4.5.2 | Testing |  | 15d | 2025-10-29 | 2025-11-18 | 135 | 0d |  |  |
| 137 | 1.6.4.5.3 | Signoff | milestone | 0d | 2025-11-18 | 2025-11-18 | 136 | 0d |  |  |
| 138 | 1.6.4.5.4 | D29 - Consumer Affairs COMPLETE | milestone | 0d | 2025-11-18 | 2025-11-18 | 137 | 0d |  |  |
| 139 | 1.6.4 | **BuildingEye** |  | 30d | 2025-11-19 | 2025-12-30 |  | 0d |  |  |
| 140 | 1.6.4.1 | Requirements Analysis and Documentation |  | 5d | 2025-11-19 | 2025-11-25 | 133 | 0d |  | start no earlier than 2023-02-13 |
| 141 | 1.6.4.5 | Config |  | 15d | 2025-11-19 | 2025-12-09 | 140SS | 30d | 0d |  |
| 142 | 1.6.4.5.2 | Testing |  | 15d | 2025-12-10 | 2025-12-30 | 141 | 30d | 0d |  |
| 143 | 1.6.4.5.3 | Signoff | milestone | 0d | 2025-12-30 | 2025-12-30 | 142 | 30d | 0d |  |
| 144 | 1.6.4.5.4 | D30 - BuildingEyeCOMPLETE | milestone | 0d | 2025-12-30 | 2025-12-30 | 143 | 30d |  |  |
| 145 | 1.6.4 | **SAIRA** |  | 30d | 2025-11-19 | 2025-12-30 |  | 30d |  |  |
| 146 | 1.6.4.1 | Requirements Analysis and Documentation |  | 5d | 2025-11-19 | 2025-11-25 | 140SS | 30d | 0d | start no earlier than 2023-02-13 |
| 147 | 1.6.4.5 | Config |  | 15d | 2025-11-19 | 2025-12-09 | 146SS | 30d | 0d |  |
| 148 | 1.6.4.5.2 | Testing |  | 15d | 2025-12-10 | 2025-12-30 | 147 | 30d | 0d |  |
| 149 | 1.6.4.5.3 | Signoff | milestone | 0d | 2025-12-30 | 2025-12-30 | 148 | 30d | 0d |  |
| 150 | 1.6.4.5.4 | D31 - SAIRA COMPLETE | milestone | 0d | 2025-12-30 | 2025-12-30 | 149 | 30d |  |  |

| ID | WBS | Task | Type | Duration | Start | Finish | Predecessors | Total slack | Constraint |
| --- | --- | --- | --- | --- | --- | --- | --- | --- | --- |
| 151 | 1.6.4 | **ERMA** |  | 30d | 2025-11-19 | 2025-12-30 |  | 0d |  |
| 152 | 1.6.4.1 | Requirements Analysis and Documentation |  | 5d | 2025-11-19 | 2025-11-25 | 140SS | 0d | start no earlier than 2023-02-13 |
| 153 | 1.6.4.5 | Config |  | 15d | 2025-11-19 | 2025-12-09 | 152SS | 0d |  |
| 154 | 1.6.4.5.2 | Testing |  | 15d | 2025-12-10 | 2025-12-30 | 153 | 0d |  |
| 155 | 1.6.4.5.3 | Signoff | milestone | 0d | 2025-12-30 | 2025-12-30 | 154 | 0d |  |
| 156 | 1.6.4.5.4 | D32 - ERMA COMPLETE | milestone | 0d | 2025-12-30 | 2025-12-30 | 155 | 0d |  |
| 157 | 1.6.4 | **FUND$** |  | 30d | 2025-12-31 | 2026-02-10 |  | 0d |  |
| 158 | 1.6.4.1 | Requirements Analysis and Documentation |  | 5d | 2025-12-31 | 2026-01-06 | 151 | 0d | start no earlier than 2023-02-13 |
| 159 | 1.6.4.5 | Config |  | 15d | 2025-12-31 | 2026-01-20 | 158SS | 0d |  |
| 160 | 1.6.4.5.2 | Testing |  | 15d | 2026-01-21 | 2026-02-10 | 159 | 0d |  |
| 161 | 1.6.4.5.3 | Signoff | milestone | 0d | 2026-02-10 | 2026-02-10 | 160 | 0d |  |
| 162 | 1.6.4.5.4 | D33 - FUND$ COMPLETE | milestone | 0d | 2026-02-10 | 2026-02-10 | 161 | 0d |  |
| 163 | 1.6.4 | **Solar App+** |  | 30d | 2025-12-31 | 2026-02-10 |  | 0d |  |
| 164 | 1.6.4.1 | Requirements Analysis and Documentation |  | 5d | 2025-12-31 | 2026-01-06 | 157SS | 0d | start no earlier than 2023-02-13 |
| 165 | 1.6.4.5 | Config |  | 15d | 2025-12-31 | 2026-01-20 | 164SS | 0d |  |
| 166 | 1.6.4.5.2 | Testing |  | 15d | 2026-01-21 | 2026-02-10 | 165 | 0d |  |
| 167 | 1.6.4.5.3 | Signoff | milestone | 0d | 2026-02-10 | 2026-02-10 | 166 | 0d |  |
| 168 | 1.6.4.5.4 | D34 - Solar App+ COMPLETE | milestone | 0d | 2026-02-10 | 2026-02-10 | 167 | 0d |  |
| 169 | 1.6.4 | **Red Alert** |  | 30d | 2025-12-31 | 2026-02-10 |  | 0d |  |
| 170 | 1.6.4.1 | Requirements Analysis and Documentation |  | 5d | 2025-12-31 | 2026-01-06 | 163SS | 0d | start no earlier than 2023-02-13 |
| 171 | 1.6.4.5 | Config |  | 15d | 2025-12-31 | 2026-01-20 | 170SS | 0d |  |
| 172 | 1.6.4.5.2 | Testing |  | 15d | 2026-01-21 | 2026-02-10 | 171 | 0d |  |
| 173 | 1.6.4.5.3 | Signoff | milestone | 0d | 2026-02-10 | 2026-02-10 | 172 | 0d |  |
| 174 | 1.6.4.5.4 | D35 - Red Alert COMPLETE | milestone | 0d | 2026-02-10 | 2026-02-10 | 173 | 0d |  |

| ID | WBS | Task | Type | Duration | Start | Finish | Predecessors | Total slack | Free slack | Constraint |
| --- | --- | --- | --- | --- | --- | --- | --- | --- | --- | --- |
| 175 | 1.5 | **Data Conversion (Non Accela Data)** |  | 162d | 2025-06-27 | 2026-02-10 |  | 109d |  |  |
| 176 | 1.5.1 | **Data Conversion Analysis** |  | 162d | 2025-06-27 | 2026-02-10 |  | 109d |  |  |
| 177 | 1.5.1.1 | Secure copies of all Data Sources | milestone | 0d | 2025-06-27 | 2025-06-27 | 26FS+10d | 271d |  |  |
| 178 | 1.5.1.2 | Data Conversion Analysis & Documentation |  | 90d | 2025-10-01 | 2026-02-03 | 42SS+40d | 109d | 0d |  |
| 179 | 1.5.1.3 | Review Conversion Analysis |  | 90d | 2025-10-08 | 2026-02-10 | 178SS+5d | 109d | 0d |  |
| 180 | 1.5.1.4 | Data Conversion Documentation Complete | milestone | 0d | 2026-02-10 | 2026-02-10 | 179 | 109d | 0d |  |
| 181 | 1.5.1.5 | D36 -Data Conversion Analysis Complete | milestone | 0d | 2026-02-10 | 2026-02-10 | 180 | 109d |  |  |
| 182 | 1.5.2 | **Data Conversion Build and Test** |  | 85d | 2025-10-08 | 2026-02-03 |  | 114d |  |  |
| 183 | 1.5.2.1 | Configure tools/Scripts for Conversion |  | 70d | 2025-10-08 | 2026-01-13 | 178SS+5d | 114d | 0d |  |
| 184 | 1.5.2.3 | Execute Data Covnersion Runs |  | 70d | 2025-10-15 | 2026-01-20 | 183SS+5d | 114d | 0d |  |
| 185 | 1.5.2.4 | Data Conversion Validation (Avocette/Client) |  | 70d | 2025-10-22 | 2026-01-27 | 184SS+5d | 114d | 0d |  |
| 186 | 1.5.2.5 | Update Tools/Configuration |  | 70d | 2025-10-29 | 2026-02-03 | 185SS+5d | 114d | 0d |  |
| 187 | 1.5.2.2 | D37 -Data Conversion Build and Test Complete | milestone | 0d | 2026-02-03 | 2026-02-03 | 186 | 114d |  |  |
| 188 | 1.3.5 | **Systems Testing** |  | 20d | 2026-02-11 | 2026-03-10 |  | 0d |  |  |
| 189 | 1.3.5.1 | Final End to End Testing |  | 20d | 2026-02-11 | 2026-03-10 | 30, 79 | 0d |  | start no earlier than 2023-07-17 |
| 190 | 1.7.4 | D40 - End to End Testing Complete | milestone | 0d | 2026-03-10 | 2026-03-10 | 189 | 0d |  |  |
| 191 | 1.7 | **Training** |  | 105d | 2025-12-17 | 2026-05-12 |  | 0d |  |  |
| 192 | 1.3.6.1 | **Planning and Preparation** |  | 65d | 2025-12-17 | 2026-03-17 |  | 40d |  |  |
| 193 | 1.7.1 | Develop Training Plan (Avocette and Client) |  | 20d | 2025-12-17 | 2026-01-13 | 188FF-40d | 85d |  |  |
| 194 | 1.3.6.1.2 | Client Self Paced Training Sessions |  | 40d | 2026-01-14 | 2026-03-10 | 188FF | 45d |  |  |
| 195 | 1.3.6.1.3 | Setup Production Training Environment |  | 5d | 2026-03-11 | 2026-03-17 | 188 | 0d |  |  |
| 196 | 1.3.6.2 | **Training Delivery** |  | 40d | 2026-03-18 | 2026-05-12 |  | 0d |  |  |
| 197 | 1.7.3 | Deliver Admin Training |  | 2d | 2026-03-18 | 2026-03-19 | 188, 195 | 38d |  |  |
| 198 | 1.7.3 | Deliver Train the Trainer Training |  | 5d | 2026-04-08 | 2026-04-14 | 188, 195FS+15d | 0d |  |  |
| 199 | 1.7.3 | Client Delivers Training |  | 20d | 2026-04-15 | 2026-05-12 | 198 | 0d |  |  |
| 200 | 1.7.4 | D45 - Training complete | milestone | 0d | 2026-05-12 | 2026-05-12 | 199, 197, 198 | 0d |  |  |

| ID | WBS | Task | Type | Duration | Start | Finish | Predecessors | Total slack |
| --- | --- | --- | --- | --- | --- | --- | --- | --- |
| 201 | 1.8 | **Go Live** |  | 106d | 2026-01-19 | 2026-06-15 |  | 20d |
| 202 | 1.8.1.1 | Book Accela Migration | milestone | 0d | 2026-01-19 | 2026-01-19 | 204SS-100d | 126d |
| 203 | 1.8.1.1 | Finalize deployment checklist and send to Accela |  | 10d | 2026-05-18 | 2026-05-29 | 204SS-15d | 31d |
| 204 | 1.8.1.2 | Migrate to Production environment and conduct confirmation testing |  | 5d | 2026-06-08 | 2026-06-12 | 188, 191FS+18d | 0d |
| 205 | 1.8.1.3 | System Live |  | 1d | 2026-06-15 | 2026-06-15 | 204 | 0d |
| 206 | 1.8.1.5 | D50 - Deployment complete | milestone | 0d | 2026-06-15 | 2026-06-15 | 205 | 20d |
| 207 | 1.4 | **Post Production Support** |  | 20d | 2026-06-16 | 2026-07-13 |  | 0d |
| 208 | 1.8.1.4 | Post-Production Support |  | 20d | 2026-06-16 | 2026-07-13 | 205 | 0d |
| 209 | 1.8.1.7 | Transition to Service Plus Ongoing Support |  | 20d | 2026-06-16 | 2026-07-13 | 208FF | 0d |
| 210 | 1.8.1.5 | D60 - Post Production Support Complete | milestone | 0d | 2026-07-13 | 2026-07-13 | 209 | 0d |
